# SistemaInformatico

Schedule from MS Project, 2016-03-01 to 2016-05-27, costs in S/..
Toshiba

## Calendars

- Calendario Sistema Informático: Mon-Sat 09:00-13:00, 15:00-19:00; Sun off. Exceptions (off unless hours are given): 2016-03-24 to 2016-03-26 (Feriado por semana santa).

## Resources

| Resource | Rate |
| --- | --- |
| Ing. De Sistemas | 50 |
| Analista | 40 |
| Programador Senior | 40 |
| Programador Junior | 30 |
| Operador | 25 |
| Digitador | 20 |
| Asistente | 20 |

## Schedule

| ID | WBS | Task | Type | Duration | Start | Finish | Predecessors | Total slack | Free slack | Resources | Work | Cost |
| --- | --- | --- | --- | --- | --- | --- | --- | --- | --- | --- | --- | --- |
| 1 | 1 | Inicio de Sistema | milestone | 0d | 2016-03-01 | 2016-03-01 |  | 0d |  |  |  |  |
| 2 | 2 | **Estudio Preliminar** |  | 11d | 2016-03-01 | 2016-03-12 |  | 0d |  |  | 120h | 5,280 |
| 3 | 2.1 | Inicio de Estudio | milestone | 0d | 2016-03-01 | 2016-03-01 | 1 | 0d |  |  |  |  |
| 4 | 2.2 | Entrevista a Usuarios |  | 5d | 2016-03-01 | 2016-03-05 | 3 | 0d |  | Analista | 40h | 1,600 |
| 5 | 2.3 | Estudio de Factibilidad |  | 4d | 2016-03-07 | 2016-03-10 | 4 | 0d |  | Analista; Ing. De Sistemas | 64h | 2,880 |
| 6 | 2.4 | Análisis Costo Beneficio |  | 2d | 2016-03-11 | 2016-03-12 | 5 | 0d |  | Ing. De Sistemas | 16h | 800 |
| 7 | 2.5 | Estudio Concluido | milestone | 0d | 2016-03-12 | 2016-03-12 | 6 | 0d |  |  |  |  |
| 8 | 3 | **Análisis de Sistemas** |  | 9d | 2016-03-12 | 2016-03-23 |  | 0d |  |  | 88h | 3,040 |
| 9 | 3.1 | Inicio de Analisis | milestone | 0d | 2016-03-12 | 2016-03-12 | 7 | 0d |  |  |  |  |
| 10 | 3.2 | Casos de Uso |  | 4d | 2016-03-14 | 2016-03-17 | 9 | 0d |  | Analista | 32h | 1,280 |
| 11 | 3.3 | Modelamiento de Clases |  | 4d | 2016-03-18 | 2016-03-22 | 10 | 0d |  | Analista | 32h | 1,280 |
| 12 | 3.4 | Elaboración de Informes |  | 3d | 2016-03-21 | 2016-03-23 | 11FF+1d | 0d |  | Digitador | 24h | 480 |
| 13 | 3.5 | Analisis Concluido | milestone | 0d | 2016-03-23 | 2016-03-23 | 12 | 0d |  |  |  |  |
| 14 | 4 | **Diseño del Sistema** |  | 13d | 2016-03-23 | 2016-04-11 |  | 0d |  |  | 232h | 9,760 |
| 15 | 4.1 | Inicio de Diseño | milestone | 0d | 2016-03-23 | 2016-03-23 | 13 | 0d |  |  |  |  |
| 16 | 4.2 | Modelamiento de la BD |  | 6d | 2016-03-28 | 2016-04-02 | 15 | 0d |  | Ing. De Sistemas; Programador Senior | 96h | 4,320 |
| 17 | 4.3 | Requerimientos del Usuario |  | 3d | 2016-03-28 | 2016-03-30 | 16SS | 3d |  | Analista | 24h | 960 |
| 18 | 4.4 | Diseño de Entradas |  | 4d | 2016-04-04 | 2016-04-07 | 17, 16 | 0d |  | Analista; Programador Senior | 64h | 2,560 |
| 19 | 4.5 | Diseño de Salidas |  | 3d | 2016-04-08 | 2016-04-11 | 18 | 0d |  | Analista; Programador Senior | 48h | 1,920 |
| 20 | 4.6 | Diseño Concluido | milestone | 0d | 2016-04-11 | 2016-04-11 | 19 | 0d |  |  |  |  |
| 21 | 5 | **Programación** |  | 20d | 2016-04-11 | 2016-05-04 |  | 0d |  |  | 240h | 8,800 |
| 22 | 5.1 | Inicio de Programación | milestone | 0d | 2016-04-11 | 2016-04-11 | 20 | 0d |  |  |  |  |
| 23 | 5.2 | Procesos de negocio |  | 20d | 2016-04-12 | 2016-05-04 | 22 | 0d |  | Programador Senior | 160h | 6,400 |
| 24 | 5.3 | Mantenimiento de tablas |  | 6d | 2016-04-12 | 2016-04-18 | 23SS | 10d | 0d | Programador Junior | 48h | 1,440 |
| 25 | 5.4 | Reportes y consultas |  | 4d | 2016-04-19 | 2016-04-22 | 24 | 10d |  | Programador Junior | 32h | 960 |
| 26 | 5.5 | Programación Concluida | milestone | 0d | 2016-05-04 | 2016-05-04 | 25, 23 | 0d |  |  |  |  |

| ID | WBS | Task | Type | Duration | Start | Finish | Predecessors | Total slack | Resources | Work | Cost |
| --- | --- | --- | --- | --- | --- | --- | --- | --- | --- | --- | --- |
| 27 | 6 | **Pruebas del Sistema** |  | 16d | 2016-04-30 | 2016-05-18 |  | 0d |  | 256h | 7,200 |
| 28 | 6.1 | Inicio de Pruebas | milestone | 0d | 2016-04-30 | 2016-04-30 | 26FS-4d | 0d |  |  |  |
| 29 | 6.2 | Pruebas Modulares |  | 5d | 2016-04-30 | 2016-05-05 | 28 | 0d | Programador Junior; Operador | 80h | 2,200 |
| 30 | 6.3 | Pruebas Integrales |  | 3d | 2016-05-06 | 2016-05-09 | 29 | 0d | Programador Junior; Operador | 48h | 1,320 |
| 31 | 6.4 | Correcciones |  | 4d | 2016-05-07 | 2016-05-11 | 30FS-2d | 0d | Programador Senior | 32h | 1,280 |
| 32 | 6.5 | Elaboración de Manuales |  | 6d | 2016-05-12 | 2016-05-18 | 31 | 0d | Digitador; Programador Junior | 96h | 2,400 |
| 33 | 6.6 | Sistema Probado | milestone | 0d | 2016-05-18 | 2016-05-18 | 32 | 0d |  |  |  |
| 34 | 7 | **Puesta en Marcha** |  | 8d | 2016-05-18 | 2016-05-27 |  | 0d |  | 144h | 6,080 |
| 35 | 7.1 | Inicio de Puesta en Marcha | milestone | 0d | 2016-05-18 | 2016-05-18 | 33 | 0d |  |  |  |
| 36 | 7.2 | Instalación del sistema |  | 2d | 2016-05-19 | 2016-05-20 | 35 | 0d | Asistente | 16h | 320 |
| 37 | 7.3 | Capacitación al usuario |  | 8d | 2016-05-19 | 2016-05-27 | 36SS | 0d | Ing. De Sistemas; Programador Senior | 128h | 5,760 |
| 38 | 7.4 | Sistema en Producción | milestone | 0d | 2016-05-27 | 2016-05-27 | 37 | 0d |  |  |  |
| 39 | 8 | Sistema Concluido | milestone | 0d | 2016-05-27 | 2016-05-27 | 38 | 0d |  |  |  |
